# Agile Project Management

Schedule from MS Project, 2021-03-08 to 2021-06-05, costs in $, A marks actual dates.

## Calendars

- Calendar 1: Mon-Fri 08:00-12:00, 13:00-17:00; Sat-Sun off. Exceptions (off unless hours are given): 2021-03-27 to 2021-03-28 08:00-12:00, 13:00-17:00.

## Resources

| Resource | Rate |
| --- | --- |
| Mariana | 20 |
| Aline | 20 |
| Vinicius | 20 |
| Hariel | 20 |
| Henrique | 20 |
| Jean | 20 |
| Debora | 20 |

## Schedule

| ID | WBS | Task | Type | Duration | Start | Finish | Predecessors | Complete | Remaining | Baseline start | Baseline finish | Baseline duration | Total slack | Free slack | Constraint | Deadline | Resources | Work | Actual work | Cost | Baseline cost | Actual cost |
| --- | --- | --- | --- | --- | --- | --- | --- | --- | --- | --- | --- | --- | --- | --- | --- | --- | --- | --- | --- | --- | --- | --- |
| 1 | 1 | **PROJETO GSW** |  | 68.25d? | 2021-03-08 A | 2021-06-05 |  | 55% | 30.6d? | 2021-03-08 | 2021-06-05 | 66.25d? |  |  |  | 2021-06-05 |  | 528h | 270h | 10,560 | 7,880 | 5,400 |
| 2 | 1.1 | **Sprint #1** |  | 15d? | 2021-03-08 A | 2021-03-26 A |  | 100% |  | 2021-03-08 | 2021-03-28 | 16d |  |  |  | 2021-03-28 |  | 270h | 270h | 5,400 | 2,800 | 5,400 |
| 3 | 1.1.1 | Planejamento de Entrega das Sprints |  | 7.5d | 2021-03-08 A | 2021-03-17 A |  | 100% |  | 2021-03-08 | 2021-03-12 | 5d? |  |  |  |  | Mariana [25%]; Debora [25%]; Vinicius [50%]; Aline [50%] | 60h | 60h | 1,200 | 800 | 1,200 |
| 4 | 1.1.2 | Artefatos: Planejamento da Entrevista; Ata da entrevista; Product Backlog; Documento de Visão; Documento de Casos de Uso; Termo de Abertura do Projeto; Declaração do Escopo do Projeto; Plano de Gerenciamento do Cronograma; Plano de Custo. |  | 4.44d? | 2021-03-17 A | 2021-03-23 A | 3 | 100% |  | 2021-03-15 | 2021-03-17 | 2.57d? |  |  | start no earlier than 2021-03-08 |  | Debora [25%]; Hariel [25%]; Henrique [25%]; Jean [25%]; Mariana [25%]; Vinicius [50%]; Aline [50%] | 80h | 80h | 1,600 | 720 | 1,600 |
| 5 | 1.1.3 | Wireframe desenvolvido no Figma |  | 7.5d? | 2021-03-08 A | 2021-03-17 A |  | 100% |  | 2021-03-15 | 2021-03-18 | 4d? |  |  | start no earlier than 2021-03-08 |  | Jean [25%]; Debora [25%] | 30h | 30h | 600 | 320 | 600 |
| 6 | 1.1.4 | Página de visualização dos Projetos carregados exibidos em Cards |  | 7.5d | 2021-03-17 A | 2021-03-26 A | 5 | 100% |  | 2021-03-15 | 2021-03-18 | 4d? |  |  | start no earlier than 2021-03-08 |  | Henrique [25%]; Hariel [25%] | 30h | 30h | 600 | 320 | 600 |
| 7 | 1.1.5 | Modelagem do Banco de Dados, Modelo Lógico Relacional |  | 6.67d? | 2021-03-08 A | 2021-03-16 A |  | 100% |  | 2021-03-15 | 2021-03-18 | 4d? |  |  | start no earlier than 2021-03-08 |  | Aline [50%]; Mariana [25%]; Vinicius [50%] | 40h | 40h | 800 | 320 | 800 |
| 8 | 1.1.6 | Página de visualização dos projetos com um gráfico de barras com todos os projetos |  | 7.5d? | 2021-03-17 A | 2021-03-26 A | 5 | 100% |  | 2021-03-19 | 2021-03-24 | 4d? |  |  | start no earlier than 2021-03-08 |  | Henrique [25%]; Hariel [25%] | 30h | 30h | 600 | 320 | 600 |
| 9 | 1.2 | **Sprint #2** |  | 16.25d? | 2021-03-29 | 2021-04-18 | 2 |  |  | 2021-03-29 | 2021-04-18 | 16.25d |  |  |  | 2021-04-18 |  | 116h |  | 2,320 | 2,320 |  |
| 10 | 1.2.1 | Implementação do Banco de Dados no PostgreSQL |  | 1.6d? | 2021-03-29 | 2021-03-30 |  |  |  | 2021-03-29 | 2021-03-30 | 1.6d? | 13.4d |  | start no earlier than 2021-03-29 | 2021-04-18 | Aline [50%]; Mariana [25%]; Vinicius [50%] | 16h |  | 320 | 320 |  |
| 11 | 1.2.2 | Botão/Pop-up de Upload do arquivo JSON |  | 4d? | 2021-03-30 | 2021-04-04 |  |  |  | 2021-03-30 | 2021-04-04 | 4d? | 2d | 0d | finish no earlier than 2021-04-04 | 2021-04-18 | Aline [50%]; Mariana [25%]; Vinicius [50%] | 40h |  | 800 | 800 |  |
| 12 | 1.2.3 | Página de visualização das Tasks de um projeto (completas e incompletas) em gráfico de barras |  | 4d? | 2021-04-05 | 2021-04-08 | 11 |  |  | 2021-04-05 | 2021-04-08 | 4d? | 2d | 0d |  | 2021-04-18 | Hariel [25%]; Mariana [25%] | 16h |  | 320 | 320 |  |
| 13 | 1.2.4 | Visualização das horas trabalhadas em um projeto por dia, semana, mês ou ano em gráfico de linha |  | 2d? | 2021-04-09 | 2021-04-12 | 12 |  |  | 2021-04-09 | 2021-04-12 | 2d? | 2d | 0d |  | 2021-04-18 | Debora [25%]; Hariel [25%]; Henrique [25%]; Jean [25%] | 16h |  | 320 | 320 |  |
| 14 | 1.2.5 | Visualização da porcentagem de Tasks concluídas em gráfico de pizza |  | 2d? | 2021-04-13 | 2021-04-14 | 13 |  |  | 2021-04-13 | 2021-04-14 | 2d? | 2d |  |  | 2021-04-18 | Debora [25%]; Hariel [25%]; Henrique [25%]; Jean [25%] | 16h |  | 320 | 320 |  |
| 15 | 1.2.6 | Página de visualização dos Desenvolvedores do Projeto |  | 1.5d? | 2021-04-05 | 2021-04-06 | 11 |  |  | 2021-04-05 | 2021-04-06 | 1.5d? | 8.5d |  |  | 2021-04-18 | Debora [25%]; Hariel [25%]; Henrique [25%]; Jean [25%] | 12h |  | 240 | 240 |  |
| 16 | 1.3 | **Sprint #3** |  | 19.2d? | 2021-04-28 | 2021-05-25 | 9 |  |  | 2021-04-28 | 2021-05-25 | 19.2d |  |  |  | 2021-05-16 |  | 72h |  | 1,440 | 1,360 |  |
| 17 | 1.3.1 | Visualização das Tasks do Desenvolvedor (completas e incompletas) |  | 0.67d? | 2021-04-28 | 2021-04-28 | 15 |  |  | 2021-04-28 | 2021-04-28 | 0.67d? | 11.67d | 0d | start no earlier than 2021-04-28 | 2021-05-16 | Aline [50%]; Hariel [25%]; Mariana [25%]; Vinicius [50%] | 8h |  | 160 | 160 |  |
| 18 | 1.3.2 | Visualização do Total de Horas trabalhadas por um Desenvolvedor em determinado projeto |  | 0.67d? | 2021-04-28 | 2021-04-29 | 17 |  |  | 2021-04-28 | 2021-04-29 | 0.67d? | 11.67d |  | start no earlier than 2021-04-28 | 2021-05-16 | Aline [50%]; Hariel [25%]; Mariana [25%]; Vinicius [50%] | 8h |  | 160 | 160 |  |
| 19 | 1.3.3 | Tela de Cadastro e Login de Usuário |  | 6.67d? | 2021-04-28 | 2021-05-06 | 10 |  |  | 2021-04-28 | 2021-05-06 | 6.67d? | 6.33d |  | start no earlier than 2021-04-28 | 2021-05-16 | Debora [25%]; Henrique [25%]; Jean [25%] | 40h |  | 800 | 800 |  |
| 20 | 1.3.4 | Criação da logotipo e paleta de cores do projeto |  | 2.67d? | 2021-04-28 | 2021-04-30 |  |  |  | 2021-04-28 | 2021-04-30 | 3d? | 10.33d |  | start no earlier than 2021-04-28 | 2021-05-16 | Debora [25%]; Jean [25%]; Mariana [25%] | 16h |  | 320 | 240 |  |
| 21 | 1.4 | **Sprint #4** |  | 16.25d? | 2021-05-17 | 2021-06-05 | 16 |  |  | 2021-05-17 | 2021-06-05 | 16.25d? |  |  |  | 2021-06-05 |  | 70h |  | 1,400 | 1,400 |  |
| 22 | 1.4.1 | Vídeo tutorial de primeiro acesso da aplicação |  | 0.75d? | 2021-05-25 | 2021-05-25 | 16 |  |  | 2021-05-25 | 2021-05-25 | 0.75d? | 8.18d |  | start no earlier than 2021-05-17 | 2021-06-05 | Aline [50%]; Debora [25%]; Jean [25%] | 6h |  | 120 | 120 |  |
| 23 | 1.4.2 | Implementação da responsividade total da aplicação |  | 4d? | 2021-05-25 | 2021-05-31 | 16 |  |  | 2021-05-25 | 2021-05-31 | 4d? | 4.92d |  | finish no earlier than 2021-05-17 | 2021-06-05 | Hariel [25%]; Henrique [25%] | 16h |  | 320 | 320 |  |
| 24 | 1.4.3 | Suporte da equipe para correção de BUGs e outros | milestone | 0d? | 2021-05-25 | 2021-05-25 | 16 |  |  | 2021-05-25 | 2021-05-25 | 0d? | 8.93d |  | finish no earlier than 2021-05-17 | 2021-06-05 | Aline [50%]; Debora [25%]; Hariel [25%]; Henrique [25%]; Jean [25%]; Mariana [25%]; Vinicius [50%] |  |  |  |  |  |
| 25 | 1.4.4 | Hospedagem e domínio da aplicação |  | 2.22d? | 2021-05-25 | 2021-05-27 | 16 |  |  | 2021-05-25 | 2021-05-27 | 2.22d? | 6.7d |  | finish no earlier than 2021-05-17 | 2021-06-05 | Aline [50%]; Debora [25%]; Hariel [25%]; Henrique [25%]; Jean [25%]; Mariana [25%]; Vinicius [50%] | 40h |  | 800 | 800 |  |
| 26 | 1.4.5 | Botão “Imprimir relatório” |  | 0.67d? | 2021-05-25 | 2021-05-25 | 16 |  |  | 2021-05-25 | 2021-05-25 | 0.67d? | 8.26d |  | finish no earlier than 2021-05-17 | 2021-06-05 | Aline [50%]; Hariel [25%]; Mariana [25%]; Vinicius [50%] | 8h |  | 160 | 160 |  |

Notes:
- 3: Esta tarefa atrasou e demandou mais tempo que o previsto. CAUSA: para efetuar o planejamento correto das sprints foi necessário primeiramente fechar o backlog do produto. COMPARAÇÃO: Apesar de no modelo ideal (linha de base) seria necessário ter todo o planejamento pronto antes do início das outras atividades, a atividades se iniciaram paralelamente ao desenvolvimento do planejamento.
- 4: Esta tarefa demandou mais tempo que o previsto, fundamentalmente pela complexidade da contrução do backlog e em estimar os tempos das estórias baseado na opnião de todos os integrantes da equipe através do planning poker. Consequentemente os artefatos que dependiam do backlog validado também sofreram atrasos nas entregas previstas.
- 5: Não houve atrasos na tarefa pois esta não possuia uma dependência tão forte com as outras tarefas, e pôde tranquilamente ser realizada em paralelo, e os recursos para a tarefa estavam disponíveis para executá-la.
- 6: Apesar do protótipo não ter sido ponto de bloquei da tarefa, ela demandou mais tempo que o previsato, visto que para o desenvolvimento dos códigos foi necessário extenso estudo da ferramenta Vue.js Node.js para concluir a tarefa.
- 7: O modelo lógico relacional e a normalização dos dados em si foi concluída no prazo previsto e validadas com o cliente mesmo antes da entrega. Mas a inserção desses dados no SGDB demandou mais tempo ue o previsto visto que foi necessário estudo do Postregresql e de Node.js.
- 8: Apesar do protótipo não ter sido ponto de bloquei da tarefa, ela demandou mais tempo que o previsato, visto que para o desenvolvimento dos códigos foi necessário extenso estudo da ferramenta Vue.js Node.js para concluir a tarefa.
